Schedule from OmniPlan.
Project start 2016-04-23

## Resources

| Resource | Group |
| --- | --- |
| Resource 1 | staff |
| Equipment 1 | equipment |
| Material 1 | material |
| Group 1 | group |
| Evan | staff |
| Brad | staff |
| Sarah | staff |
| Bill | staff |

## Schedule

| ID | WBS | Task | Predecessors | Complete | Constraint | Resources | Work | Actual work |
| --- | --- | --- | --- | --- | --- | --- | --- | --- |
| 1 | 1 | **Offload unwanted or time-consuming services/responsibilities.** |  |  |  |  |  |  |
| 2 | 1.1 | Migrate/remove Redmine |  | 100% |  |  | 2h | 2h |
| 3 | 1.2 | **Migrate RT to secondary provider or utilize RT engineers to upgrade our installation. Investigate providers.** |  |  |  |  |  |  |
| 4 | 1.2.1 | Research which provider or hosted solution is best. |  |  |  |  | 40h |  |
| 5 | 1.2.2 | Work with provider to upgrade and maintain RT installation. | 4 |  |  |  | 80h |  |
| 6 | 1.2.3 | Make an inventory of all of our ‘RT’ scrips and discard those which are no longer necessary for migration. |  |  | start no earlier than 2016-04-25 |  | 40h |  |
| 7 | 1.3 | **Migrate tape backup archive to BackBlaze.** |  |  | start no earlier than 2016-04-25 |  |  |  |
| 8 | 1.3.1 | Develop Python script or utilize other backup application to push data to BackBlaze |  |  | start no earlier than 2016-04-25 | Evan | 40.25h |  |
| 9 | 1.3.2 | Measure performance and reliability of process; backup data to tapes and BackBlaze | 8 |  | start no earlier than 2016-05-02 | Evan | 40h |  |
| 10 | 1.3.3 | Find a service provider who will export all of our tapes to BackBlaze or process these oureselves | 8 |  | start no earlier than 2016-05-02 | Evan | 40h |  |
| 11 | 1.3.4 | Re-write documentation on backing up user, project data, and restoration to conform to BackBlaze backup system. | 10 |  | start no earlier than 2016-05-09 | Evan | 16h |  |
| 12 | 1.4 | **Migrate all web services, except ShinyServer, to Heroku, including DVN.** |  |  |  |  |  |  |
| 13 | 1.4.1 | Give Raman access to a basic Heroku account and ask him to deploy Dataverse Network to its and its components. |  |  |  |  | 16h |  |
| 14 | 1.4.2 | **Create a Heroku account and deploy Latanya’s PHP application to it.** |  |  |  |  |  |  |
| 15 | 1.4.2.1 | If successful, work with Latanya to migrate one of her websites entirely to Heroku to test the viability of this environment. |  |  |  |  | 40h |  |
| 16 | 1.4.3 | Work with Heroku to determine enterprise pricing for the amount of web sites we host. |  |  |  |  | 24h |  |
| 17 | 1.4.4 | Determine the best method to migrate our users permissions to Heroku: How much CPU time should they get? How much memory should they get? Should they be allowed to provision as many websites as they want, etc. |  |  |  |  | 40h |  |
| 18 | 1.4.5 | Determine the best method for file storage on Heroku — using an S3 bucket, connecting to our local NetApp, etc. |  |  |  |  | 40h |  |
| 19 | 1.4.6 | Work with Gary and Cris to decide how much support we provide for users in the Heroku environment: Do we help them setup GitHub repositories? Do we help them with basic PHP programming fundamentals, permissions? |  |  |  |  | 24h |  |
| 20 | 1.4.7 | Migrate all sites to Heroku. Provide a deadline. |  |  |  |  | 8h |  |
| 21 | 1.4.8 | Ask DVN to migrate their entire toolchain to Heroku. Provide a deadline. |  |  |  |  | 8h |  |
| 22 | 2 | **Migrate/upgrade essential services.** | 1 |  |  |  |  |  |
| 23 | 2.1 | Migrate appropriate DHCP options to Amazon DHCP |  |  |  |  | 40h |  |
| 24 | 2.2 | Migrate DNS to Route 53 |  |  |  |  | 40h |  |
| 25 | 2.3 | Upgrade/migrate LDAP to CentOS 6/Amazon |  |  | start no earlier than 2016-04-22 | Bill | 160h |  |

Notes:
- 2: DVN will probably require a data backup.
- 3: RT provides both a hosted solution or you can hire a contractor to duplicate and upgrade your service. We should investigate which is preferable.
- 5: This would hopefully require little effort on our part.
- 12: Heroku is a layer on top of AWS which provides point-and-click deployment of PHP, Python, Ruby, and Node.JS applications. Requires basic familiarity with Github.
- 13: This should actually give them what they want — latest Python, automatically provisioning NGINX, etc.
- 14: Ask Latanya which PHP application we can migrate for testing — one that contains no important/sensitive data. Take this PHP application from /nfs/www and migrate it to Heroku.
- 16: Collect the amount of websites we host. The amount of PHP and/or Python websites we host does not account for very much.
- 19: We prefer a self-service model. If possible, make users perform the majority of the work, apart from initial account setup.
- 21: We may need to provision a Jenkins instance for them, although this may be provided by Heroku as well.
- 25: Maybe put slave hosts in different zones? Expose via Amazon LB.

| ID | WBS | Task | Type | Predecessors | Constraint | Resources | Work |
| --- | --- | --- | --- | --- | --- | --- | --- |
| 26 | 3 | **Rectify Puppet manifests with AWS** |  | 22 |  |  |  |
| 27 | 3.1 | **Migrate hmdc-admin repository to GitHub** |  |  |  |  |  |
| 28 | 3.1.1 | Mine hmdc-admin for passwords and remove or place passwords elsewhere. |  |  |  |  | 40h |
| 29 | 3.1.2 | Push de-password-ified hmdc-admin repository to GitHub. |  |  |  |  | 8h |
| 30 | 3.1.3 | Retire HUIT GIT account, but keep a backup of hmdc-admin on NFS in case need to look at commit history. |  |  |  |  | 1h |
| 31 | 3.2 | Test all pertinent modules on AWS, make changes accordingly. |  |  |  |  | 96h |
| 32 | 3.3 | Hiera-ify all data structures currently used in hmdc-admin, adding an $::operatingsystem entry to the Hiera tree. |  |  |  |  | 40h |
| 33 | 3.4 | Write spec tests for all modules which lack spec tests. |  |  |  |  | 80h |
| 34 | 4 | AWS migration preparations complete | milestone | 26 | start no earlier than 2016-04-25 |  |  |
| 35 | 5 | **Prepare RCE/AWS demo. environment** |  | 34SS | start no earlier than 2016-04-24 |  |  |
| 36 | 5.1 | Reconfigure AWS networking to expose a public interface for NX4 portal |  |  | start no earlier than 2016-04-22 | Bill | 32h |
| 37 | 5.2 | Install NX4/5 Portal (?) |  |  | start no earlier than 2016-04-24 |  | 40h |
| 38 | 5.3 | Install NX4/5 login nodes |  |  | start no earlier than 2016-04-25 |  | 40h |
| 39 | 5.4 | Deploy HTCondor collector/negotiator |  |  | start no earlier than 2016-04-25 |  | 40h |
| 40 | 5.5 | Deploy 2..3 high memory EC2 instances for HTCondor startd(s), permanent. |  |  | start no earlier than 2016-04-25 |  | 40h |

Notes:
- 28: There may be a faster way of doing this. We may just want to truncate our Git history. Similarly, because we are moving to the Cloud, we may not need passwords like the Server Reports password statically defined inside our repository.
